# HP

Schedule from MS Project, 2010-03-10 to 2010-11-07, 3 hours a day.

## Calendars

- Estándar: Mon-Sun 12:30-13:30, 20:00-22:00.

## Resources

| Resource | Group |
| --- | --- |
| Analista Programador 1 | Grupo 10 |
| Analista Programador 2 | Grupo 10 |
| Analista Programador 3 | Grupo 10 |
| Analista DBA | Grupo 10 |
| Tester QA | Grupo 10 |
| Diseñador | Grupo 10 |

## Schedule

| ID | WBS | Task | Duration | Start | Finish | Predecessors | Baseline start | Baseline finish | Baseline duration | Total slack | Free slack | Constraint | Resources | Work |
| --- | --- | --- | --- | --- | --- | --- | --- | --- | --- | --- | --- | --- | --- | --- |
| 1 | 1 | **ELECCION DE EMPRESA** | 6.33d | 2010-03-10 | 2010-03-16 |  | 2010-03-10 | 2010-03-16 | 6.33d | 103d | 0d |  |  | 19h |
| 2 | 1.1 | Presentar empresa seleccionada | 6.33d | 2010-03-10 | 2010-03-16 |  | 2010-03-10 | 2010-03-16 | 6.33d | 103d |  | start no earlier than 2010-03-10 | Analista Programador 1 | 19h |
| 3 | 2 | **DEFINICIÓN DE REQUERIMIENTOS** | 35d | 2010-03-16 | 2010-04-20 | 1 | 2010-03-16 | 2010-04-20 | 35d | 86d | 0d |  |  | 144h |
| 4 | 2.1 | **INVESTIGACIÓN PRELIMINAR Y RELEVAMIENTO GENERAL** | 15d | 2010-03-16 | 2010-03-31 |  | 2010-03-16 | 2010-03-31 | 15d | 96.33d | 0.67d |  | Analista Programador 1 | 89h |
| 5 | 2.1.1 | Estructura organizativa y características generales de la organización o empresa seleccionada | 4d | 2010-03-16 | 2010-03-20 |  | 2010-03-16 | 2010-03-20 | 4d | 107.33d |  | finish no earlier than 2010-03-20 | Analista Programador 2 | 12h |
| 6 | 2.1.2 | Objetivos y procesos de negocio. Funciones detectadas e interfaces | 8.33d | 2010-03-20 | 2010-03-28 |  | 2010-03-20 | 2010-03-28 | 8.33d | 99.33d |  | start no earlier than 2010-03-20 | Analista Programador 1 | 25h |
| 7 | 2.1.3 | Análisis de la Tecnología de Información existente | 2.33d | 2010-03-29 | 2010-03-31 |  | 2010-03-29 | 2010-03-31 | 2.33d | 96.33d |  | start no earlier than 2010-03-29 | Analista Programador 2 | 7h |
| 8 | 2.2 | **MODELO FUNCIONAL DEL SISTEMA ACTUAL** | 10.33d | 2010-04-01 | 2010-04-11 | 4 | 2010-04-01 | 2010-04-11 | 10.33d | 95d |  |  |  | 29h |
| 9 | 2.2.1 | Diagrama de Casos de Uso | 6.33d | 2010-04-01 | 2010-04-07 |  | 2010-04-01 | 2010-04-07 | 6.33d | 99d |  | start no earlier than 2010-04-01 | Analista Programador 2 | 19h |
| 10 | 2.2.2 | Descripciones detalladas de los Casos de Uso | 3.33d | 2010-04-08 | 2010-04-11 |  | 2010-04-08 | 2010-04-11 | 3.33d | 88.67d | 0.67d | start no earlier than 2010-04-08 | Analista Programador 1 | 10h |
| 11 | 2.3 | **DIAGNOSTICO Y ANÁLISIS DEL SISTEMA** | 8.33d | 2010-04-12 | 2010-04-20 | 10 | 2010-04-12 | 2010-04-20 | 8.33d | 86d |  |  |  | 26h |
| 12 | 2.3.1 | Necesidades funcionales de la organización | 2.33d | 2010-04-12 | 2010-04-14 |  | 2010-04-12 | 2010-04-14 | 2.33d | 89d | 3d | start no earlier than 2010-04-12 | Analista Programador 3 | 7h |
| 13 | 2.3.2 | Objetivo y alcance preliminar del nuevo sistema | 3.33d | 2010-04-14 | 2010-04-17 |  | 2010-04-14 | 2010-04-17 | 3.33d | 86d | 0d | start no earlier than 2010-04-14 | Analista Programador 2 | 10h |
| 14 | 2.3.3 | Planeamiento del Proyecto | 3d | 2010-04-17 | 2010-04-20 | 12, 13 | 2010-04-17 | 2010-04-20 | 3d | 86d |  | finish no earlier than 2010-04-20 | Analista Programador 1 | 9h |
| 15 | 3 | **DISEÑO** | 42d | 2010-04-20 | 2010-06-01 | 3 | 2010-04-20 | 2010-06-01 | 42d | 66.67d | 7.67d |  |  | 333h |
| 16 | 3.1 | Objetivo y alcances del nuevo sistema | 2d | 2010-04-20 | 2010-04-22 |  | 2010-04-20 | 2010-04-22 | 2d | 106.67d |  |  | Analista Programador 2 | 6h |
| 17 | 3.2 | Salidas del Sistema | 2d | 2010-04-20 | 2010-04-22 |  | 2010-04-20 | 2010-04-22 | 2d | 106.67d |  |  | Analista Programador 3 | 6h |
| 18 | 3.3 | **Modelo Funcional y Modelo de Datos** | 31.33d | 2010-04-23 | 2010-05-24 |  | 2010-04-23 | 2010-05-24 | 31.33d | 74.67d | 15.67d |  |  | 285h |
| 19 | 3.3.1 | **Modulo Administración** | 6d | 2010-04-23 | 2010-04-28 |  | 2010-04-23 | 2010-04-28 | 6d | 83.33d | 0d |  |  | 54h |
| 20 | 3.3.1.1 | Desarrollar Diagrama de Casos de Uso | 6d | 2010-04-23 | 2010-04-28 |  | 2010-04-23 | 2010-04-28 | 6d | 83.33d |  | start no earlier than 2010-04-23 | Analista Programador 2 | 18h |
| 21 | 3.3.1.2 | Desarrollar Diagrama de Interacción c/Persistencia | 6d | 2010-04-23 | 2010-04-28 |  | 2010-04-23 | 2010-04-28 | 6d | 83.33d |  | start no earlier than 2010-04-23 | Diseñador | 18h |
| 22 | 3.3.1.3 | Desarrollar Diagrama de Clases y de Persistencia | 6d | 2010-04-23 | 2010-04-28 |  | 2010-04-23 | 2010-04-28 | 6d | 83.33d |  | start no earlier than 2010-04-23 | Diseñador | 18h |
| 23 | 3.3.2 | **Modulo Seguridad** | 5d | 2010-04-29 | 2010-05-03 | 19 | 2010-04-29 | 2010-05-03 | 5d | 83.33d | 0d |  |  | 45h |
| 24 | 3.3.2.1 | Desarrollar Diagrama de Caso de Uso | 5d | 2010-04-29 | 2010-05-03 |  | 2010-04-29 | 2010-05-03 | 5d | 83.33d |  | start no earlier than 2010-04-26 | Analista Programador 1 | 15h |
| 25 | 3.3.2.2 | Desarrollar Diagrama de Interacción c/Persistencia | 5d | 2010-04-29 | 2010-05-03 |  | 2010-04-29 | 2010-05-03 | 5d | 83.33d |  | start no earlier than 2010-04-26 | Diseñador | 15h |
| 26 | 3.3.2.3 | Desarrollar Diagrama de Clases y de Persistencia | 5d | 2010-04-29 | 2010-05-03 |  | 2010-04-29 | 2010-05-03 | 5d | 83.33d |  | start no earlier than 2010-04-26 | Diseñador | 15h |

| ID | WBS | Task | Duration | Start | Finish | Predecessors | Baseline start | Baseline finish | Baseline duration | Total slack | Free slack | Constraint | Resources | Work |
| --- | --- | --- | --- | --- | --- | --- | --- | --- | --- | --- | --- | --- | --- | --- |
| 27 | 3.3.3 | **Modulo Estadísticas** | 6d | 2010-05-04 | 2010-05-09 | 23 | 2010-05-04 | 2010-05-09 | 6d | 84.67d | 14d |  |  | 54h |
| 28 | 3.3.3.1 | Desarrollar Diagrama de Caso de Uso | 6d | 2010-05-04 | 2010-05-09 |  | 2010-05-04 | 2010-05-09 | 6d | 84.67d |  | finish no earlier than 2010-05-05 | Analista Programador 3 | 18h |
| 29 | 3.3.3.2 | Desarrollar Diagrama de Interacción c/Persistencia | 6d | 2010-05-04 | 2010-05-09 |  | 2010-05-04 | 2010-05-09 | 6d | 84.67d |  | finish no earlier than 2010-05-05 | Diseñador | 18h |
| 30 | 3.3.3.3 | Desarrollar Diagrama de Clases y de Persistencia | 6d | 2010-05-04 | 2010-05-09 |  | 2010-05-04 | 2010-05-09 | 6d | 84.67d |  | finish no earlier than 2010-05-05 | Diseñador | 18h |
| 31 | 3.3.4 | **Modulo Gestión UMIS** | 7.33d | 2010-05-10 | 2010-05-17 | 23 | 2010-05-10 | 2010-05-17 | 7.33d | 77.33d | 6.67d |  |  | 66h |
| 32 | 3.3.4.1 | Desarrollar Diagrama de Caso de Uso | 7.33d | 2010-05-10 | 2010-05-17 |  | 2010-05-10 | 2010-05-17 | 7.33d | 77.33d |  | start no earlier than 2010-05-10 | Analista Programador 2 | 22h |
| 33 | 3.3.4.2 | Desarrollar Diagrama de Interacción c/Persistencia | 7.33d | 2010-05-10 | 2010-05-17 |  | 2010-05-10 | 2010-05-17 | 7.33d | 77.33d |  | start no earlier than 2010-05-10 | Diseñador | 22h |
| 34 | 3.3.4.3 | Desarrollar Diagrama de Clases y de Persistencia | 7.33d | 2010-05-10 | 2010-05-17 |  | 2010-05-10 | 2010-05-17 | 7.33d | 77.33d |  | start no earlier than 2010-05-10 | Diseñador | 22h |
| 35 | 3.3.5 | **Modulo Unificación de documentación** | 7.33d | 2010-05-17 | 2010-05-24 |  | 2010-05-17 | 2010-05-24 | 7.33d | 74.67d |  |  |  | 66h |
| 36 | 3.3.5.1 | Desarrollar Diagramas de Casos de Uso | 7.33d | 2010-05-17 | 2010-05-24 |  | 2010-05-17 | 2010-05-24 | 7.33d | 74.67d |  | start no earlier than 2010-05-17 | Analista Programador 3 | 22h |
| 37 | 3.3.5.2 | Desarrollar Diagrama de Interacción c/Persistencia | 7.33d | 2010-05-17 | 2010-05-24 |  | 2010-05-17 | 2010-05-24 | 7.33d | 74.67d |  | start no earlier than 2010-05-17 | Diseñador | 22h |
| 38 | 3.3.5.3 | Desarrollar Diagrama de Clases y de Persistencia | 7.33d | 2010-05-17 | 2010-05-24 |  | 2010-05-17 | 2010-05-24 | 7.33d | 74.67d |  | start no earlier than 2010-05-17 | Diseñador | 22h |
| 39 | 3.4 | Planificación de pruebas de “Integración entre módulos del Sistema” | 4.33d | 2010-05-24 | 2010-05-28 | 19, 23, 27, 31 | 2010-05-24 | 2010-05-28 | 4.33d | 70.67d | 11.67d | start no earlier than 2010-05-24 | Tester QA | 13h |
| 40 | 3.5 | Planificacion pruebas de “Seguridad por niveles de usuarios” | 3.33d | 2010-05-24 | 2010-05-27 | 19, 23, 27, 31 | 2010-05-24 | 2010-05-27 | 3.33d | 71.67d | 12.67d | start no earlier than 2010-05-24 | Analista Programador 1 | 10h |
| 41 | 3.6 | Planificación de capacitación de usuarios | 4.33d | 2010-05-28 | 2010-06-01 |  | 2010-05-28 | 2010-06-01 | 4.33d | 66.67d | 7.67d | start no earlier than 2010-05-28 | Analista Programador 1 | 13h |
| 42 | 4 | **DESARROLLO E IMPLEMENTACION** | 152d | 2010-06-09 | 2010-11-07 | 15 | 2010-06-09 | 2010-11-07 | 152d | 0d |  |  |  | 688h |
| 43 | 4.1 | **Inicio de la programación** | 139d | 2010-06-09 | 2010-10-25 | 18, 39, 40, 41 | 2010-06-09 | 2010-10-25 | 139d | 0d |  |  |  | 625h |
| 44 | 4.1.1 | **Modulo Administraciòn** | 27.33d | 2010-06-09 | 2010-07-06 |  | 2010-06-09 | 2010-07-06 | 27.33d | 57.67d | 0d |  |  | 121h |
| 45 | 4.1.1.1 | Desarrollar Interfaz de Usuario | 14.33d | 2010-06-09 | 2010-06-23 |  | 2010-06-09 | 2010-06-23 | 14.33d | 59d | 0.67d | start no earlier than 2010-06-09 | Analista Programador 1 | 43h |
| 46 | 4.1.1.2 | Desarrollar Funcionalidades | 14.33d | 2010-06-09 | 2010-06-11 |  | 2010-06-09 | 2010-06-11 | 14.33d | 71.33d | 13d | start no earlier than 2010-06-09 | Analista DBA | 43h |
| 47 | 4.1.1.3 | Realizar Pruebas Unitarias | 5.33d | 2010-06-24 | 2010-06-29 | 45, 46 | 2010-06-24 | 2010-06-29 | 5.33d | 58.33d | 0.67d | start no earlier than 2010-06-24 | Tester QA | 16h |
| 48 | 4.1.1.4 | Realizar Prueba del Módulo | 3.33d | 2010-06-30 | 2010-07-03 | 47 | 2010-06-30 | 2010-07-03 | 3.33d | 57.67d | 0d | finish no earlier than 2010-07-03 | Tester QA | 10h |
| 49 | 4.1.1.5 | Revisar y Arreglar errores | 3d | 2010-07-03 | 2010-07-06 | 48 | 2010-07-03 | 2010-07-06 | 3d | 57.67d |  |  | Tester QA | 9h |
| 50 | 4.1.2 | **Modulo Seguridad** | 27d | 2010-07-06 | 2010-08-02 | 44 | 2010-07-06 | 2010-08-02 | 27d | 57.67d | 0d |  |  | 126h |
| 51 | 4.1.2.1 | Desarrollar Interfaz de Usuario | 15d | 2010-07-06 | 2010-07-21 |  | 2010-07-06 | 2010-07-21 | 15d | 57.67d | 0d | start no earlier than 2010-07-06 | Analista Programador 2 | 45h |
| 52 | 4.1.2.2 | Desarrollar Funcionalidades | 15d | 2010-07-06 | 2010-07-08 |  | 2010-07-06 | 2010-07-08 | 15d | 71d | 13.33d | start no earlier than 2010-07-06 | Analista DBA | 45h |
| 53 | 4.1.2.3 | Realizar Pruebas Unitarias | 4d | 2010-07-21 | 2010-07-25 | 51, 52 | 2010-07-21 | 2010-07-25 | 4d | 57.67d | 0d |  | Tester QA | 12h |
| 54 | 4.1.2.4 | Realizar Prueba del Módulo | 4d | 2010-07-25 | 2010-07-29 | 52, 53 | 2010-07-25 | 2010-07-29 | 4d | 57.67d | 0d |  | Tester QA | 12h |
| 55 | 4.1.2.5 | Revisar y Arreglar errores | 4d | 2010-07-29 | 2010-08-02 | 54 | 2010-07-29 | 2010-08-02 | 4d | 57.67d |  |  | Tester QA | 12h |

| ID | WBS | Task | Duration | Start | Finish | Predecessors | Baseline start | Baseline finish | Baseline duration | Total slack | Free slack | Constraint | Resources | Work |
| --- | --- | --- | --- | --- | --- | --- | --- | --- | --- | --- | --- | --- | --- | --- |
| 56 | 4.1.3 | **Modulo Estadìsticas** | 27d | 2010-08-02 | 2010-08-29 | 50 | 2010-08-02 | 2010-08-29 | 27d | 57.67d |  |  |  | 126h |
| 57 | 4.1.3.1 | Desarrollar Interfaz de Usuario | 15d | 2010-08-02 | 2010-08-17 |  | 2010-08-02 | 2010-08-17 | 15d | 57.67d | 0d |  | Analista Programador 3 | 45h |
| 58 | 4.1.3.2 | Desarrollar Funcionalidades | 15d | 2010-08-02 | 2010-08-04 |  | 2010-08-02 | 2010-08-04 | 15d | 71d | 13.33d |  | Analista DBA | 45h |
| 59 | 4.1.3.3 | Realizar Pruebas Unitarias | 4d | 2010-08-17 | 2010-08-21 | 57, 58 | 2010-08-17 | 2010-08-21 | 4d | 57.67d | 0d |  | Tester QA | 12h |
| 60 | 4.1.3.4 | Realizar Prueba del Módulo | 4d | 2010-08-21 | 2010-08-25 | 58, 59 | 2010-08-21 | 2010-08-25 | 4d | 57.67d | 0d |  | Tester QA | 12h |
| 61 | 4.1.3.5 | Revisar y Arreglar errores | 4d | 2010-08-25 | 2010-08-29 | 60 | 2010-08-25 | 2010-08-29 | 4d | 57.67d |  |  | Tester QA | 12h |
| 62 | 4.1.4 | **Modulo Gestón UMIS** | 27d | 2010-08-02 | 2010-08-29 | 50 | 2010-08-02 | 2010-08-29 | 27d | 57.67d |  |  |  | 126h |
| 63 | 4.1.4.1 | Desarrollar Interfaz de Usuario | 15d | 2010-08-02 | 2010-08-17 |  | 2010-08-02 | 2010-08-17 | 15d | 57.67d | 0d |  | Analista Programador 1 | 45h |
| 64 | 4.1.4.2 | Desarrollar Funcionalidades | 15d | 2010-08-02 | 2010-08-04 |  | 2010-08-02 | 2010-08-04 | 15d | 71d | 13.33d |  | Analista DBA | 45h |
| 65 | 4.1.4.3 | Realizar Pruebas Unitarias | 4d | 2010-08-17 | 2010-08-21 | 63, 64 | 2010-08-17 | 2010-08-21 | 4d | 57.67d | 0d |  | Tester QA | 12h |
| 66 | 4.1.4.4 | Realizar Prueba del Módulo | 4d | 2010-08-21 | 2010-08-25 | 64, 65 | 2010-08-21 | 2010-08-25 | 4d | 57.67d | 0d |  | Tester QA | 12h |
| 67 | 4.1.4.5 | Revisar y Arreglar errores | 4d | 2010-08-25 | 2010-08-29 | 66 | 2010-08-25 | 2010-08-29 | 4d | 57.67d |  |  | Tester QA | 12h |
| 68 | 4.1.5 | **Modulo unificación de documentación** | 27d | 2010-09-29 | 2010-10-25 |  | 2010-09-29 | 2010-10-25 | 27d | 0d |  |  |  | 126h |
| 69 | 4.1.5.1 | Desarrollar Interfaz de Usuario | 15d | 2010-09-29 | 2010-10-13 |  | 2010-09-29 | 2010-10-13 | 15d | 0d |  | start no earlier than 2010-09-29 | Analista Programador 2 | 45h |
| 70 | 4.1.5.2 | Desarrollar Funcionalidades | 15d | 2010-09-29 | 2010-10-13 |  | 2010-09-29 | 2010-10-13 | 15d | 0d |  | start no earlier than 2010-09-29 | Analista Programador 3 | 45h |
| 71 | 4.1.5.3 | Realizar Pruebas Unitarias | 4d | 2010-10-14 | 2010-10-17 | 69, 70 | 2010-10-14 | 2010-10-17 | 4d | 0d |  | start no earlier than 2010-09-29 | Tester QA | 12h |
| 72 | 4.1.5.4 | Realizar Prueba del Módulo | 4d | 2010-10-18 | 2010-10-21 | 71 | 2010-10-18 | 2010-10-21 | 4d | 0d |  | start no earlier than 2010-09-29 | Tester QA | 12h |
| 73 | 4.1.5.5 | Revisar y Arreglar errores | 4d | 2010-10-22 | 2010-10-25 | 72 | 2010-10-22 | 2010-10-25 | 4d | 0d |  | start no earlier than 2010-09-29 | Tester QA | 12h |
| 74 | 4.2 | finalizacion de programación y documentación | 6d | 2010-10-26 | 2010-10-31 | 44, 50, 56, 62, 68 | 2010-10-26 | 2010-10-31 | 6d | 0d |  | start no earlier than 2010-10-25 | Analista Programador 3 | 18h |
| 75 | 4.3 | Resultado de las pruebas | 5d | 2010-10-25 | 2010-10-29 | 48, 54, 60, 66, 72 | 2010-10-25 | 2010-10-29 | 5d | 9d |  | start no earlier than 2010-10-25 | Tester QA | 15h |
| 76 | 4.4 | Procedimientos manuales y entorno en la organización | 5d | 2010-11-01 | 2010-11-05 | 74 | 2010-11-01 | 2010-11-05 | 5d | 2d |  | start no earlier than 2010-10-25 | Analista Programador 2 | 15h |
| 77 | 4.5 | Manual de usuario | 5d | 2010-11-01 | 2010-11-05 | 74 | 2010-11-01 | 2010-11-05 | 5d | 0d |  | start no earlier than 2010-10-25 | Analista Programador 1 | 15h |
| 78 | 4.6 | Sistema funcionando | 2d | 2010-11-06 | 2010-11-07 | 77 | 2010-11-06 | 2010-11-07 | 2d | 0d |  |  |  |  |
